# Simple Project Plan

Schedule from MS Project, 2016-10-20 to 2017-05-26, status date 2016-12-23, costs in €, A marks actual dates.
Microsoft Corporation

## Calendars

- Estándar: Mon-Fri 09:00-13:00, 15:00-19:00; Sat-Sun off.

## Resources

| Resource | Rate |
| --- | --- |
| Julio | 12 |
| Ruben | 12 |
| Enrique | 12 |
| Jose Luis | 12 |
| Antonio | 12 |

## Schedule

| ID | WBS | Task | Type | Duration | Start | Finish | Predecessors | Complete | Actual finish | Baseline start | Baseline finish | Baseline duration | Resources | Work | Actual work | Cost | Baseline cost | Actual cost |
| --- | --- | --- | --- | --- | --- | --- | --- | --- | --- | --- | --- | --- | --- | --- | --- | --- | --- | --- |
| 1 | 1 | **Hito 1** |  | 47d | 2016-10-20 A | 2016-12-23 A |  | 100% |  | 2016-10-20 | 2016-12-23 | 47d |  | 1440h | 1440h | 17,280 | 17,280 | 17,280 |
| 2 | 1.1 | **Iteración 1** |  | 10d | 2016-10-20 A | 2016-11-02 |  | 100% | 2016-10-20 | 2016-10-20 | 2016-11-02 | 10d |  | 72h | 72h | 864 | 864 | 864 |
| 3 | 1.1.1 | Sistema de gestión de eventos (Trigger System/ Event Manager)(?) | manual | 1d | 2016-10-20 A | 2016-10-20 A |  | 100% |  | 2016-10-20 | 2016-10-20 | 1d | Julio | 8h | 8h | 96 | 96 | 96 |
| 4 | 1.1.2 | Detallar plan iteracion del mes de Noviembre. Creacion Subtareas y precedencias en Project | manual | 1d | 2016-10-20 A | 2016-10-20 A |  | 100% |  | 2016-10-20 | 2016-10-20 | 1d | Jose Luis | 8h | 8h | 96 | 96 | 96 |
| 5 | 1.1.3 | Detallar plan iteraciones del mes de Noviembre. Asignar recursos a las tareas en Project | manual | 1d | 2016-10-20 A | 2016-10-20 A |  | 100% |  | 2016-10-20 | 2016-10-20 | 1d | Jose Luis | 8h | 8h | 96 | 96 | 96 |
| 6 | 1.1.4 | Rellenar documento Gestión de riesgos | manual | 1d | 2016-10-20 A | 2016-10-20 A |  | 100% |  | 2016-10-20 | 2016-10-20 | 1d | Antonio; Enrique; Jose Luis; Julio; Ruben | 40h | 40h | 480 | 480 | 480 |
| 7 | 1.1.5 | Registrar los tiempos y % de realización de tareas en Project | manual | 1d | 2016-10-20 A | 2016-10-20 A |  | 100% |  | 2016-10-20 | 2016-10-20 | 1d | Jose Luis | 8h | 8h | 96 | 96 | 96 |
| 8 | 1.2 | **Iteración 2** |  | 10d | 2016-11-03 A | 2016-11-16 A |  | 100% |  | 2016-11-03 | 2016-11-16 | 10d |  | 288h | 288h | 3,456 | 3,456 | 3,456 |
| 9 | 1.2.1 | Implementar el disparo del raycasting hacia el suelo para saber si el player está en el suelo | manual | 1d | 2016-11-04 A | 2016-11-04 A |  | 100% |  | 2016-11-04 | 2016-11-04 | 1d | Jose Luis | 8h | 8h | 96 | 96 | 96 |
| 10 | 1.2.2 | Programar el salto del player | manual | 1d | 2016-11-07 A | 2016-11-07 A | 9 | 100% |  | 2016-11-07 | 2016-11-07 | 1d | Jose Luis | 8h | 8h | 96 | 96 | 96 |
| 11 | 1.2.3 | Ajustar el salto para que haya doble salto | manual | 1d | 2016-11-08 A | 2016-11-08 A | 10 | 100% |  | 2016-11-08 | 2016-11-08 | 1d | Jose Luis | 8h | 8h | 96 | 96 | 96 |
| 12 | 1.2.4 | Implementar la captura de eventos de teclado | manual | 1d | 2016-11-08 A | 2016-11-08 A |  | 100% |  | 2016-11-08 | 2016-11-08 | 1d | Julio | 8h | 8h | 96 | 96 | 96 |
| 13 | 1.2.5 | Implementar el movimiento básico | manual | 2d | 2016-11-09 A | 2016-11-10 A | 12 | 100% |  | 2016-11-09 | 2016-11-10 | 2d | Enrique; Julio | 32h | 32h | 384 | 384 | 384 |
| 14 | 1.2.6 | Implementar el raycasting usando el target de la camara | manual | 1d | 2016-11-11 A | 2016-11-11 A |  | 100% |  | 2016-11-11 | 2016-11-11 | 1d | Enrique; Jose Luis | 16h | 16h | 192 | 192 | 192 |
| 15 | 1.2.7 | Comprobar el tipo de objeto que colisiona con el ray | manual | 1d | 2016-11-14 A | 2016-11-14 A | 14 | 100% |  | 2016-11-14 | 2016-11-14 | 1d | Enrique; Jose Luis; Julio | 24h | 24h | 288 | 288 | 288 |
| 16 | 1.2.8 | Acelaración del movimiento del jugador | manual | 2d | 2016-11-15 A | 2016-11-16 A |  | 100% |  | 2016-11-15 | 2016-11-16 | 2d | Enrique; Julio | 32h | 32h | 384 | 384 | 384 |
| 17 | 1.2.9 | Compilar Irrlitch en Visual Studio con Bullet3D | manual | 1d | 2016-11-03 A | 2016-11-03 A |  | 100% |  | 2016-11-03 | 2016-11-03 | 1d | Enrique; Julio | 16h | 16h | 192 | 192 | 192 |
| 18 | 1.2.10 | Agregar el motor de red RakNet | manual | 2d | 2016-11-04 A | 2016-11-07 A | 17 | 100% |  | 2016-11-04 | 2016-11-07 | 2d | Antonio; Julio; Ruben | 48h | 48h | 576 | 576 | 576 |
| 19 | 1.2.11 | Ajustar las conexiones clientes y servidor | manual | 1d | 2016-11-08 A | 2016-11-08 A |  | 100% |  | 2016-11-08 | 2016-11-08 | 1d | Ruben; Antonio | 16h | 16h | 192 | 192 | 192 |
| 20 | 1.2.12 | Visualización de todos los clientes | manual | 3d | 2016-11-09 A | 2016-11-11 A | 19 | 100% |  | 2016-11-09 | 2016-11-11 | 3d | Ruben; Antonio | 48h | 48h | 576 | 576 | 576 |
| 21 | 1.2.13 | Detección colisiones con Bullet3D | manual | 1d | 2016-11-11 A | 2016-11-11 A |  | 100% |  | 2016-11-11 | 2016-11-11 | 1d | Julio | 8h | 8h | 96 | 96 | 96 |
| 22 | 1.2.14 | Implementar el lanzamiento del misil usando las bases del disparo normal | manual | 1d | 2016-11-15 A | 2016-11-15 A |  | 100% |  | 2016-11-15 | 2016-11-15 | 1d | Jose Luis | 8h | 8h | 96 | 96 | 96 |
| 23 | 1.2.15 | Usar Bullet3D para el lanzamiento del misil | manual | 1d | 2016-11-16 A | 2016-11-16 A | 22 | 100% |  | 2016-11-16 | 2016-11-16 | 1d | Jose Luis | 8h | 8h | 96 | 96 | 96 |
| 24 | 1.3 | **Iteración 3** |  | 10d | 2016-11-17 A | 2016-11-30 A |  | 100% |  | 2016-11-17 | 2016-11-30 | 10d |  | 400h | 400h | 4,800 | 4,800 | 4,800 |
| 25 | 1.3.1 | Detallar plan iteraciones del mes de Diciembre. Creacion Subtareas y precedencias en Project | manual | 1d | 2016-11-17 A | 2016-11-17 A |  | 100% |  | 2016-11-17 | 2016-11-17 | 1d | Jose Luis | 8h | 8h | 96 | 96 | 96 |
| 26 | 1.3.2 | Detallar plan iteraciones del mes de Diciembre. Asignar recursos a las tareas en Project | manual | 1d | 2016-11-18 A | 2016-11-18 A |  | 100% |  | 2016-11-18 | 2016-11-18 | 1d | Jose Luis | 8h | 8h | 96 | 96 | 96 |
| 27 | 1.3.3 | Registrar los tiempos y % de realización de tareas en Project | milestone, manual | 0d | 2016-11-17 A | 2016-11-17 A |  | 100% |  | 2016-11-17 | 2016-11-17 |  | Jose Luis |  |  |  |  |  |
| 28 | 1.3.4 | Programar los disparos en multijugador | manual | 3d | 2016-11-17 A | 2016-11-21 A |  | 100% |  | 2016-11-17 | 2016-11-21 | 3d | Ruben | 24h | 24h | 288 | 288 | 288 |
| 29 | 1.3.5 | Control del player kinematic (Bullet3D) | manual | 4d | 2016-11-17 A | 2016-11-22 A |  | 100% |  | 2016-11-17 | 2016-11-22 | 4d | Julio; Enrique | 64h | 64h | 768 | 768 | 768 |
| 30 | 1.3.6 | Implementación de la cámara FPS | manual | 2d | 2016-11-23 A | 2016-11-24 A |  | 100% |  | 2016-11-23 | 2016-11-24 | 2d | Enrique; Julio | 32h | 32h | 384 | 384 | 384 |
| 31 | 1.3.7 | Diseño del logo | manual | 3d | 2016-11-25 A | 2016-11-29 A |  | 100% |  | 2016-11-25 | 2016-11-29 | 3d | Julio | 24h | 24h | 288 | 288 | 288 |
| 32 | 1.3.8 | Programar la granada y la explosion | manual | 1d | 2016-11-21 A | 2016-11-21 A |  | 100% |  | 2016-11-21 | 2016-11-21 | 1d | Jose Luis | 8h | 8h | 96 | 96 | 96 |
| 33 | 1.3.9 | Programar las granadas en el servidor | manual | 3d | 2016-11-22 A | 2016-11-24 A | 32 | 100% |  | 2016-11-22 | 2016-11-24 | 3d | Ruben | 24h | 24h | 288 | 288 | 288 |
| 34 | 1.3.10 | Programar la lista circular de armas | manual | 1d | 2016-11-22 A | 2016-11-22 A |  | 100% |  | 2016-11-22 | 2016-11-22 | 1d | Jose Luis | 8h | 8h | 96 | 96 | 96 |
| 35 | 1.3.11 | Incorporar un modelo a cada arma de la lista | manual | 2d | 2016-11-25 A | 2016-11-28 A | 34 | 100% |  | 2016-11-25 | 2016-11-28 | 2d | Enrique | 16h | 16h | 192 | 192 | 192 |
| 36 | 1.3.12 | Programar los drops | manual | 2d | 2016-11-23 A | 2016-11-24 A |  | 100% |  | 2016-11-23 | 2016-11-24 | 2d | Jose Luis | 16h | 16h | 192 | 192 | 192 |
| 37 | 1.3.13 | Programar los drops en el servidor | manual | 2d | 2016-11-25 A | 2016-11-28 A | 36 | 100% |  | 2016-11-25 | 2016-11-28 | 2d | Ruben | 16h | 16h | 192 | 192 | 192 |
| 38 | 1.3.14 | Implementar la estructura del state factory | manual | 2d | 2016-11-29 A | 2016-11-30 A |  | 100% |  | 2016-11-29 | 2016-11-30 | 2d | Enrique; Jose Luis | 32h | 32h | 384 | 384 | 384 |
| 39 | 1.3.15 | Programar los paquetes de vida | manual | 2d | 2016-11-25 A | 2016-11-28 A |  | 100% |  | 2016-11-25 | 2016-11-28 | 2d | Jose Luis | 16h | 16h | 192 | 192 | 192 |
| 40 | 1.3.16 | Programar los paquetes de vida en el servidor | manual | 2d | 2016-11-29 A | 2016-11-30 A | 39 | 100% |  | 2016-11-29 | 2016-11-30 | 2d | Ruben | 16h | 16h | 192 | 192 | 192 |
| 41 | 1.3.17 | Filtro de colisiones en Bullet3D | manual | 1d | 2016-11-30 A | 2016-11-30 A |  | 100% |  | 2016-11-30 | 2016-11-30 | 1d | Julio | 8h | 8h | 96 | 96 | 96 |
| 42 | 1.3.18 | Crear motor vacío y compilar librerías | manual | 1d | 2016-11-17 A | 2016-11-17 A |  | 100% |  | 2016-11-17 | 2016-11-17 | 1d | Antonio | 8h | 8h | 96 | 96 | 96 |
| 43 | 1.3.19 | Implementar el árbol de la escena | manual | 1d | 2016-11-18 A | 2016-11-18 A |  | 100% |  | 2016-11-18 | 2016-11-18 | 1d | Antonio | 8h | 8h | 96 | 96 | 96 |
| 44 | 1.3.20 | Implementar GLM | manual | 1d | 2016-11-21 A | 2016-11-21 A |  | 100% |  | 2016-11-21 | 2016-11-21 | 1d | Antonio | 8h | 8h | 96 | 96 | 96 |
| 45 | 1.3.21 | Implementar ASSIMP | manual | 2d | 2016-11-22 A | 2016-11-23 A |  | 100% |  | 2016-11-22 | 2016-11-23 | 2d | Antonio | 16h | 16h | 192 | 192 | 192 |
| 46 | 1.3.22 | Implementar clase Input para capturar eventos | manual | 5d | 2016-11-24 A | 2016-11-30 A |  | 100% |  | 2016-11-24 | 2016-11-30 | 5d | Antonio | 40h | 40h | 480 | 480 | 480 |

| ID | WBS | Task | Type | Duration | Start | Finish | Complete | Actual start | Baseline start | Baseline finish | Baseline duration | Resources | Work | Actual work | Cost | Baseline cost | Actual cost |
| --- | --- | --- | --- | --- | --- | --- | --- | --- | --- | --- | --- | --- | --- | --- | --- | --- | --- |
| 47 | 1.4 | **Iteración 4** |  | 10d | 2016-12-01 A | 2016-12-14 A | 100% |  | 2016-12-01 | 2016-12-14 | 10d |  | 400h | 400h | 4,800 | 4,800 | 4,800 |
| 48 | 1.4.1 | Documento de diseño de sistemas de toma de decisión de los NPCs | manual | 1d | 2016-12-14 A | 2016-12-14 A | 100% |  | 2016-12-14 | 2016-12-14 | 1d | Jose Luis | 8h | 8h | 96 | 96 | 96 |
| 49 | 1.4.2 | Documento de diseño técnico de la arquitectura de la IA de los NPCs | manual | 1d | 2016-12-02 A | 2016-12-02 A | 100% |  | 2016-12-02 | 2016-12-02 | 1d | Enrique | 8h | 8h | 96 | 96 | 96 |
| 50 | 1.4.3 | Diseño de requerimientos y funciones de red | manual | 1d | 2016-12-01 A | 2016-12-01 A | 100% |  | 2016-12-01 | 2016-12-01 | 1d | Ruben | 8h | 8h | 96 | 96 | 96 |
| 51 | 1.4.4 | Diseño técnico de funcionamiento del motor de red | manual | 1d | 2016-12-02 A | 2016-12-02 A | 100% |  | 2016-12-02 | 2016-12-02 | 1d | Ruben | 8h | 8h | 96 | 96 | 96 |
| 52 | 1.4.5 | Documento con la especificación del formato propio para la definición de niveles | manual | 1d | 2016-12-01 A | 2016-12-01 A | 100% |  | 2016-12-01 | 2016-12-01 | 1d | Enrique | 8h | 8h | 96 | 96 | 96 |
| 53 | 1.4.6 | Programar el Trigger System | manual | 6d | 2016-12-05 A | 2016-12-12 A | 100% |  | 2016-12-05 | 2016-12-12 | 6d | Enrique; Jose Luis; Julio | 144h | 144h | 1,728 | 1,728 | 1,728 |
| 54 | 1.4.7 | Programar la tabla de puntuaciones en el multijugador | manual | 2d | 2016-12-05 A | 2016-12-06 A | 100% |  | 2016-12-05 | 2016-12-06 | 2d | Antonio; Ruben | 32h | 32h | 384 | 384 | 384 |
| 55 | 1.4.8 | Cambios de arma del enemigo visibles en el multijugador | manual | 2d | 2016-12-07 A | 2016-12-08 A | 100% |  | 2016-12-07 | 2016-12-08 | 2d | Antonio; Ruben | 32h | 32h | 384 | 384 | 384 |
| 56 | 1.4.9 | Bocetos de los elementos | manual | 1d | 2016-12-01 A | 2016-12-01 A | 100% |  | 2016-12-01 | 2016-12-01 | 1d | Jose Luis | 8h | 8h | 96 | 96 | 96 |
| 57 | 1.4.10 | Bocetos de los personajes | manual | 1d | 2016-12-02 A | 2016-12-02 A | 100% |  | 2016-12-02 | 2016-12-02 | 1d | Jose Luis | 8h | 8h | 96 | 96 | 96 |
| 58 | 1.4.11 | Bocetos del entorno | manual | 1d | 2016-12-13 A | 2016-12-13 A | 100% |  | 2016-12-13 | 2016-12-13 | 1d | Jose Luis | 8h | 8h | 96 | 96 | 96 |
| 59 | 1.4.12 | Programar los spawns | manual | 2d | 2016-12-13 A | 2016-12-14 A | 100% |  | 2016-12-13 | 2016-12-14 | 2d | Julio; Enrique | 32h | 32h | 384 | 384 | 384 |
| 60 | 1.4.13 | Video del logo | manual | 4d | 2016-12-09 A | 2016-12-14 A | 100% |  | 2016-12-09 | 2016-12-14 | 4d | Ruben; Antonio | 64h | 64h | 768 | 768 | 768 |
| 61 | 1.4.14 | Preparar juego en Release | manual | 2d | 2016-12-01 A | 2016-12-02 A | 100% |  | 2016-12-01 | 2016-12-02 | 2d | Antonio; Julio | 32h | 32h | 384 | 384 | 384 |
| 62 | 1.5 | **Iteración 5** |  | 7d | 2016-12-15 A | 2016-12-23 A | 100% |  | 2016-12-15 | 2016-12-23 | 7d |  | 280h | 280h | 3,360 | 3,360 | 3,360 |
| 63 | 1.5.1 | Programar la búsqueda de servidores | manual | 2d | 2016-12-20 A | 2016-12-21 A | 100% |  | 2016-12-20 | 2016-12-21 | 2d | Antonio | 16h | 16h | 192 | 192 | 192 |
| 64 | 1.5.2 | Aplicar el modelo EVA | manual | 2d | 2016-12-15 A | 2016-12-16 A | 100% |  | 2016-12-15 | 2016-12-16 | 2d | Jose Luis | 16h | 16h | 192 | 192 | 192 |
| 65 | 1.5.3 | Confeccionar informes de iteración e informe resumen de Hito 1 | manual | 1d | 2016-12-19 A | 2016-12-19 A | 100% |  | 2016-12-19 | 2016-12-19 | 1d | Jose Luis | 8h | 8h | 96 | 96 | 96 |
| 66 | 1.5.4 | Depurar el código | manual | 3d | 2016-12-15 A | 2016-12-19 A | 100% |  | 2016-12-15 | 2016-12-19 | 3d | Enrique; Julio; Antonio; Ruben | 96h | 96h | 1,152 | 1,152 | 1,152 |
| 67 | 1.5.5 | Optimizar la memoria | manual | 2d | 2016-12-20 A | 2016-12-21 A | 100% |  | 2016-12-20 | 2016-12-21 | 2d | Enrique; Julio; Ruben | 48h | 48h | 576 | 576 | 576 |
| 68 | 1.5.6 | Elaborar mapa de prueba para la presentación | manual | 2d | 2016-12-20 A | 2016-12-21 A | 100% |  | 2016-12-20 | 2016-12-21 | 2d | Jose Luis | 16h | 16h | 192 | 192 | 192 |
| 69 | 1.5.7 | Elaborar la presentación del hito 1 | manual | 2d | 2016-12-22 A | 2016-12-23 A | 100% |  | 2016-12-22 | 2016-12-23 | 2d | Antonio; Enrique; Jose Luis; Julio; Ruben | 80h | 80h | 960 | 960 | 960 |
| 70 | 2 | **Hito 2** |  | 27d | 2016-12-24 | 2017-01-30 A | 100% | 2016-12-26 | 2016-12-24 | 2017-01-30 | 27d |  | 1040h | 1040h | 12,480 |  | 12,480 |
| 71 | 2.1 | Periodo de vacaciones | manual | 10d | 2016-12-26 A | 2017-01-06 A | 100% |  |  |  |  | Antonio; Enrique; Jose Luis; Julio; Ruben | 400h | 400h | 4,800 |  | 4,800 |

| ID | WBS | Task | Type | Duration | Start | Finish | Complete | Remaining | Baseline start | Baseline finish | Baseline duration | Resources | Work | Actual work | Cost | Actual cost |
| --- | --- | --- | --- | --- | --- | --- | --- | --- | --- | --- | --- | --- | --- | --- | --- | --- |
| 72 | 2.2 | **Periodo de trabajo - Iteración 1** |  | 16d | 2017-01-09 A | 2017-01-30 A | 100% |  |  |  |  |  | 640h | 640h | 7,680 | 7,680 |
| 73 | 2.2.1 | Finalización del tema 7 de PM | manual | 2d | 2017-01-09 A | 2017-01-10 A | 100% |  |  |  |  | Antonio; Enrique; Jose Luis; Julio; Ruben | 80h | 80h | 960 | 960 |
| 74 | 2.2.2 | Preparar presentación del hito 1 | manual | 1d | 2017-01-11 A | 2017-01-11 A | 100% |  |  |  |  | Antonio; Enrique; Jose Luis; Julio; Ruben | 40h | 40h | 480 | 480 |
| 75 | 2.2.3 | Modelo del casco | manual | 3d | 2017-01-12 A | 2017-01-16 A | 100% |  |  |  |  | Ruben | 24h | 24h | 288 | 288 |
| 76 | 2.2.4 | Modelos de las armas | manual | 5d | 2017-01-12 A | 2017-01-18 A | 100% |  |  |  |  | Jose Luis | 40h | 40h | 480 | 480 |
| 77 | 2.2.5 | Integración de librería para GUI | manual | 2d | 2017-01-12 A | 2017-01-13 A | 100% |  |  |  |  | Antonio | 16h | 16h | 192 | 192 |
| 78 | 2.2.6 | Desarrollo e implementación del GUI | manual | 5d | 2017-01-16 A | 2017-01-20 A | 100% |  |  |  |  | Antonio | 40h | 40h | 480 | 480 |
| 79 | 2.2.7 | Cartel del juego | manual | 4d | 2017-01-19 A | 2017-01-24 A | 100% |  |  |  |  | Jose Luis | 32h | 32h | 384 | 384 |
| 80 | 2.2.8 | Modelo del misil | manual | 1d | 2017-01-25 A | 2017-01-25 A | 100% |  |  |  |  | Jose Luis | 8h | 8h | 96 | 96 |
| 81 | 2.2.9 | Modelo del paquete de vida | manual | 1d | 2017-01-26 A | 2017-01-26 A | 100% |  |  |  |  | Jose Luis | 8h | 8h | 96 | 96 |
| 82 | 2.2.10 | Modelos de diversos elementos del escenario | manual | 2d | 2017-01-27 A | 2017-01-30 A | 100% |  |  |  |  | Jose Luis | 16h | 16h | 192 | 192 |
| 83 | 2.2.11 | Sistema de depuración visual del motor de red | manual | 6d | 2017-01-23 A | 2017-01-30 A | 100% |  |  |  |  | Antonio | 48h | 48h | 576 | 576 |
| 84 | 2.2.12 | Implementación de grafos | manual | 3d | 2017-01-12 A | 2017-01-16 A | 100% |  |  |  |  | Enrique; Julio | 48h | 48h | 576 | 576 |
| 85 | 2.2.13 | Sistema de búsqueda de caminos y control (PathPlanning) | manual | 3d | 2017-01-17 A | 2017-01-19 A | 100% |  |  |  |  | Julio; Ruben; Enrique | 72h | 72h | 864 | 864 |
| 86 | 2.2.14 | Sistema de seguimiento del camino (PathFollow) | manual | 4d | 2017-01-20 A | 2017-01-25 A | 100% |  |  |  |  | Julio; Ruben; Enrique | 96h | 96h | 1,152 | 1,152 |
| 87 | 2.2.15 | Sistema de camino a Item (Djikstra) | manual | 3d | 2017-01-26 A | 2017-01-30 A | 100% |  |  |  |  | Julio; Ruben; Enrique | 72h | 72h | 864 | 864 |
| 88 | 3 | Hito 3 | manual | 47d | 2017-01-31 A | 2017-04-05 |  | 47d | 2017-01-31 | 2017-04-05 | 47d |  |  |  |  |  |
| 89 | 4 | Hito 4 | manual | 37d | 2017-04-06 | 2017-05-26 |  |  | 2017-04-06 | 2017-05-26 | 37d |  |  |  |  |  |
